# Projeto ContabilTarefa

Schedule from GanttProject, 2026-02-02 to 2026-06-24.
ITBX Tech
Holidays every year on 01-01, 04-21, 05-01, 09-07, 10-12, 11-02, 11-15, 12-25

## Calendars

- Project calendar: Mon-Fri working; Sat-Sun off. Exceptions (off unless hours are given): 2026-02-16 (Carnival Monday), 2026-02-17 (Carnival Tuesday), 2026-02-18 (Ash Wednesday), 2026-04-03 (Good Friday), 2026-06-04 (Corpus Christi).

## Resources

| Resource |
| --- |
| Gustavo |
| Thiago |
| Mariluce |
| Juliana |

## Schedule

| ID | WBS | Task | Duration | Start | Finish | Predecessors | Complete | Resources |
| --- | --- | --- | --- | --- | --- | --- | --- | --- |
| 1 | 1 | **Design** | 35d | 2026-02-02 | 2026-03-25 |  | 97% | Gustavo |
| 2 | 1.1 | Documentação de Requisitos | 15d | 2026-02-02 | 2026-02-25 |  | 100% | Gustavo |
| 3 | 1.2 | Documentação de Processos | 30d | 2026-02-02 | 2026-03-18 |  | 100% | Gustavo |
| 4 | 1.3 | **Modelo de Dados** | 35d | 2026-02-02 | 2026-03-25 |  | 94% | Gustavo; Mariluce |
| 5 | 1.3.1 | ME-R Conceitual | 32d | 2026-02-02 | 2026-03-20 |  | 100% | Gustavo; Mariluce |
| 6 | 1.3.2 | ME-R Físico | 1d | 2026-03-23 | 2026-03-23 | 5 | 100% | Mariluce |
| 7 | 1.3.3 | Criação do Script da Base de Dados | 1d | 2026-03-24 | 2026-03-24 | 5, 6 | 100% | Mariluce |
| 8 | 1.3.4 | Dicionário de Dados | 2d | 2026-03-24 | 2026-03-25 | 6 |  | Gustavo |
| 9 | 2 | **Build** | 30d | 2026-03-23 | 2026-05-06 |  |  | Thiago |
| 10 | 2.1 | Documento de Implantação | 30d | 2026-03-23 | 2026-05-06 |  |  | Gustavo; Thiago |
| 11 | 2.2 | Configuração de ambiente local | 2d | 2026-03-23 | 2026-03-24 |  |  | Thiago |
| 12 | 2.3 | Configuração de ambiente de homologação | 2d | 2026-03-24 | 2026-03-25 |  |  | Thiago |
| 13 | 2.4 | Lógica de acesso | 2d | 2026-03-25 | 2026-03-26 |  |  | Thiago |
| 14 | 2.5 | Tela de login e separação de contas (admin, contabilidade e cliente) | 2d | 2026-03-26 | 2026-03-27 |  |  | Thiago |
| 15 | 2.6 | Lógica de cadastro de usuários | 4d | 2026-03-30 | 2026-04-02 |  |  | Thiago |
| 16 | 2.7 | Armazenamento de cadastros e telas de cadastros | 2d | 2026-04-01 | 2026-04-02 |  |  | Thiago |
| 17 | 2.8 | Tela e lógica de requisição de solicitação de solicitação | 2d | 2026-04-02 | 2026-04-06 |  |  | Thiago |
| 18 | 2.9 | Sistema de notificação | 2d | 2026-04-06 | 2026-04-07 |  |  | Thiago |
| 19 | 2.10 | Tela e lógica de Recebimento de solicitações | 2d | 2026-04-07 | 2026-04-08 |  |  | Thiago |
| 20 | 2.11 | Tela de download e lógica de permissão | 2d | 2026-04-08 | 2026-04-09 |  |  | Thiago |
| 21 | 2.12 | Sistema de cadastro de requisições periódicas | 2d | 2026-04-09 | 2026-04-10 |  |  | Thiago |
| 22 | 3 | **Test** | 45d | 2026-03-23 | 2026-05-27 |  |  | Juliana |
| 23 | 3.1 | Documentação Plano de Testes | 15d | 2026-03-23 | 2026-04-13 |  |  | Juliana |
| 24 | 3.2 | Testes unitários | 10d | 2026-05-07 | 2026-05-20 | 9, 23 |  | Gustavo; Juliana |
| 25 | 3.3 | Testes de Aceitação do Usuário (UAT) | 5d | 2026-05-21 | 2026-05-27 | 24 |  | Gustavo; Juliana |

| ID | WBS | Task | Duration | Start | Finish | Predecessors | Resources |
| --- | --- | --- | --- | --- | --- | --- | --- |
| 26 | 4 | **Production** | 11d | 2026-06-10 | 2026-06-24 | 25 | Gustavo |
| 27 | 4.1 | Ambiente de produção | 1d | 2026-06-10 | 2026-06-10 |  | Gustavo; Thiago |
| 28 | 4.2 | Validação em produção | 10d | 2026-06-11 | 2026-06-24 | 27 | Gustavo; Thiago; Mariluce; Juliana |
